# SDK 4.0

Schedule from MS Project, 2007-01-19 to 2007-09-25, A marks actual dates.
NCI

## Calendars

- Standard: Mon-Fri 08:00-12:00, 13:00-17:00; Sat-Sun off. Exceptions (off unless hours are given): 2007-02-05 to 2007-02-07, 2007-07-04.

## Resources

| Resource |
| --- |
| Satish |
| Dan |
| Charles |
| Avinash |
| Steve |
| Kunal |
| Doug |
| Satish/Kunal |
| Dan/Kunal |
| Ye |
| C |
| caGrid |
| Kunal/Satish |
| Satish/Dan |
| Christophe |
| Steve A. |
| Ye Wu |
| Vijay |
| Doug M. |
| 177 |
| SDK Users |
| Terpsys |
| QA |

## Schedule

| ID | WBS | Task | Type | Duration | Start | Finish | Predecessors | Complete | Remaining | Total slack | Constraint | Resources | Work | Actual work |
| --- | --- | --- | --- | --- | --- | --- | --- | --- | --- | --- | --- | --- | --- | --- |
| 1 | 1 | **caCORE SDK v4.0** |  | 173.5d? | 2007-01-19 A | 2007-09-25 |  | 34% | 114.74d? | 0d |  |  | 3768h | 1286.4h |
| 2 | 1.1 | **Inception** |  | 3d | 2007-01-19 A | 2007-01-23 A |  | 100% |  |  |  |  | 8h | 8h |
| 3 | 1.1.1 | 4.0 Kickoff meeting | milestone | 0d | 2007-01-19 A | 2007-01-19 A |  | 100% |  |  | start no earlier than 2007-01-19 | Satish; Charles; Dan; Steve |  |  |
| 4 | 1.1.2 | Create initial task plan |  | 1d | 2007-01-23 A | 2007-01-23 A |  | 100% |  |  |  | Satish | 8h | 8h |
| 5 | 1.2 | **Elaboration** |  | 13d | 2007-01-23 A | 2007-02-13 A |  | 100% |  |  |  |  | 246h | 246h |
| 6 | 1.2.1 | **Requiements meetings** |  | 6.25d | 2007-01-23 A | 2007-01-31 A |  | 100% |  |  |  |  | 78h | 78h |
| 7 | 1.2.1.1 | Requirements meeting (CGEMS, Rambrandt) |  | 0.25d | 2007-01-29 A | 2007-01-29 A |  | 100% |  |  | start no earlier than 2007-01-29 | Satish; Dan; Steve | 6h | 6h |
| 8 | 1.2.1.2 | Requirements Meeting (caCORE API) |  | 0.25d | 2007-01-23 A | 2007-01-23 A |  | 100% |  |  |  | Satish; Dan; Steve | 6h | 6h |
| 9 | 1.2.1.3 | Requirements meeting (caAdapter) |  | 0.25d | 2007-01-30 A | 2007-01-30 A |  | 100% |  |  | start no earlier than 2007-01-30 | Satish; Dan; Steve | 6h | 6h |
| 10 | 1.2.1.4 | Requirements meeting (caDSR) |  | 0.25d | 2007-01-30 A | 2007-01-30 A |  | 100% |  |  | start no earlier than 2007-01-30 | Satish; Dan; Steve | 6h | 6h |
| 11 | 1.2.1.5 | Requirements meeting (caGRID) |  | 0.25d | 2007-01-31 A | 2007-01-31 A |  | 100% |  |  | start no earlier than 2007-01-31 | Satish; Dan; Steve | 6h | 6h |
| 12 | 1.2.1.6 | Requirements meeting (other teams) |  | 2d | 2007-01-29 A | 2007-01-30 A |  | 100% |  |  | start no earlier than 2007-01-29 | Satish; Dan; Steve | 48h | 48h |
| 13 | 1.2.2 | **Scope Document** |  | 10d | 2007-01-26 A | 2007-02-13 A |  | 100% |  |  |  |  | 88h | 88h |
| 14 | 1.2.2.1 | Prepare list of scope items on gforge |  | 1d | 2007-01-26 A | 2007-01-26 A |  | 100% |  |  | start no earlier than 2007-01-26 | Satish | 8h | 8h |
| 15 | 1.2.2.2 | Draft scope document |  | 3d | 2007-01-29 A | 2007-01-31 A | 14 | 100% |  |  |  | Charles | 24h | 24h |
| 16 | 1.2.2.3 | Estimate LOE for Iteration 1 - 3 scope items |  | 1d | 2007-02-01 A | 2007-02-01 A | 15 | 100% |  |  |  | Satish | 8h | 8h |
| 17 | 1.2.2.4 | Prepare risk list |  | 1d | 2007-02-02 A | 2007-02-02 A | 16 | 100% |  |  |  | Charles; Satish | 16h | 16h |
| 18 | 1.2.2.5 | NCICB Review of scope document |  | 3d | 2007-02-08 A | 2007-02-12 A | 17 | 100% |  |  |  | Avinash | 24h | 24h |
| 19 | 1.2.2.6 | Revise scope document |  | 1d | 2007-02-13 A | 2007-02-13 A | 18 | 100% |  |  |  | Charles | 8h | 8h |
| 20 | 1.2.3 | **QA Actvities** |  | 7d | 2007-01-23 A | 2007-01-31 A |  | 100% |  |  |  |  | 72h | 72h |
| 21 | 1.2.3.1 | Setup QA repository | milestone | 0d | 2007-01-23 A | 2007-01-23 A |  | 100% |  |  |  | Steve |  |  |
| 22 | 1.2.3.2 | Modify Unit test cases and data |  | 5d | 2007-01-23 A | 2007-01-29 A | 21 | 100% |  |  |  | Steve | 40h | 40h |
| 23 | 1.2.3.3 | Validate test case |  | 2d | 2007-01-30 A | 2007-01-31 A | 22 | 100% |  |  |  | Steve; Satish | 32h | 32h |
| 24 | 1.2.4 | Revise task plan |  | 0.5d | 2007-01-23 A | 2007-01-23 A |  | 100% |  |  |  | Charles; Satish | 8h | 8h |

| ID | WBS | Task | Duration | Start | Finish | Predecessors | Complete | Remaining | Total slack | Constraint | Resources | Work | Actual work |
| --- | --- | --- | --- | --- | --- | --- | --- | --- | --- | --- | --- | --- | --- |
| 25 | 1.3 | **Construction** | 166.5d? | 2007-01-23 A | 2007-09-18 |  | 34% | 110.72d? | 5d |  |  | 3270h | 1032.4h |
| 26 | 1.3.1 | **Iteration 1** | 44d | 2007-01-23 A | 2007-03-28 |  | 98% | 0.97d | 127.5d |  |  | 802h | 753.2h |
| 27 | 1.3.1.1 | **SDK 3.2.1 Release** | 14d | 2007-01-23 A | 2007-02-14 A |  | 100% |  |  |  |  | 112h | 112h |
| 28 | 1.3.1.1.1 | Integrate new UI | 14d | 2007-01-23 A | 2007-02-14 A |  | 100% |  |  |  | Dan | 112h | 112h |
| 29 | 1.3.1.2 | **QA** | 3d | 2007-02-15 A | 2007-02-19 A |  | 100% |  |  |  |  | 24h | 24h |
| 30 | 1.3.1.2.1 | Test new UI | 3d | 2007-02-15 A | 2007-02-19 A | 28 | 100% |  |  |  | Steve | 24h | 24h |
| 31 | 1.3.1.3 | **caGrid Integration** | 33d | 2007-02-12 A | 2007-03-28 |  | 97% | 0.89d | 127.5d |  |  | 666h | 617.2h |
| 32 | 1.3.1.3.1 | **Support multiple concurrent users on the same ApplicationService** | 13.5d | 2007-02-12 A | 2007-03-01 A |  | 100% |  |  |  |  | 112h | 112h |
| 33 | 1.3.1.3.1.1 | Design | 3d | 2007-02-12 A | 2007-02-14 A |  | 100% |  |  |  | Satish/Kunal | 24h | 24h |
| 34 | 1.3.1.3.1.2 | Prototype | 3d | 2007-02-15 A | 2007-02-19 A | 33 | 100% |  |  |  | Satish | 24h | 24h |
| 35 | 1.3.1.3.1.3 | Design Review | 0.5d | 2007-02-20 A | 2007-02-20 A | 34 | 100% |  |  |  | Satish; Kunal; Doug; Avinash | 16h | 16h |
| 36 | 1.3.1.3.1.4 | Design Update/Prototype | 3d | 2007-02-20 A | 2007-02-23 A | 35 | 100% |  |  |  | Satish | 24h | 24h |
| 37 | 1.3.1.3.1.5 | Development | 3d | 2007-02-26 A | 2007-03-01 A | 38 | 100% |  |  |  | Satish | 24h | 24h |
| 38 | 1.3.1.3.2 | Use documentation in the Java docs (GF#1243) & Integrate JavaDocs in the web system | 2d | 2007-02-23 A | 2007-02-27 A | 36 | 100% |  |  |  | Satish | 16h | 16h |
| 39 | 1.3.1.3.3 | **Security** | 10.5d | 2007-02-27 A | 2007-03-13 A |  | 100% |  |  |  |  | 128h | 128h |
| 40 | 1.3.1.3.3.1 | Implement Security in Thick Client | 4d | 2007-02-27 A | 2007-03-05 A | 38 | 100% |  |  |  | Satish | 32h | 32h |
| 41 | 1.3.1.3.3.2 | **Integration of new Installation Process into SDK** | 3d | 2007-03-02 A | 2007-03-06 A |  | 100% |  |  |  |  | 24h | 24h |
| 42 | 1.3.1.3.3.2.1 | Code | 3d | 2007-03-02 A | 2007-03-06 A |  | 100% |  |  | start no earlier than 2007-03-02 | Kunal | 24h | 24h |
| 43 | 1.3.1.3.3.3 | **Upgrade to CSM to Support Grid ability to leverage new CSM installation steps** | 3d | 2007-03-07 A | 2007-03-09 A |  | 100% |  |  |  |  | 24h | 24h |
| 44 | 1.3.1.3.3.3.1 | Code | 3d | 2007-03-07 A | 2007-03-09 A | 41 | 100% |  |  |  | Kunal | 24h | 24h |
| 45 | 1.3.1.3.3.4 | **Configurable Authentication and Authorization for SDK Generated System** | 4d | 2007-03-08 A | 2007-03-13 A |  | 100% |  |  |  |  | 32h | 32h |
| 46 | 1.3.1.3.3.4.1 | Code | 4d | 2007-03-08 A | 2007-03-13 A |  | 100% |  |  | start no earlier than 2007-03-08 | Satish | 32h | 32h |
| 47 | 1.3.1.3.3.5 | **Documentation** | 2d | 2007-03-12 A | 2007-03-13 A |  | 100% |  |  |  |  | 16h | 16h |
| 48 | 1.3.1.3.3.5.1 | SDK Programmer's/Technical Guide | 2d | 2007-03-12 A | 2007-03-13 A | 43 | 100% |  |  |  | Kunal/Satish | 16h | 16h |
| 49 | 1.3.1.3.4 | Castor related work was performed on SDK 3.1 branch move to SDK 3.2 | 3d | 2007-02-15 A | 2007-02-19 A | 28 | 100% |  |  |  | Dan | 24h | 24h |
| 50 | 1.3.1.3.5 | Castor mapping for inheritance defect (GF#4031) | 0.25d | 2007-02-20 A | 2007-02-20 A | 49 | 100% |  |  |  | Dan | 2h | 2h |

| ID | WBS | Task | Type | Duration | Start | Finish | Predecessors | Complete | Remaining | Total slack | Free slack | Constraint | Resources | Work | Actual work |
| --- | --- | --- | --- | --- | --- | --- | --- | --- | --- | --- | --- | --- | --- | --- | --- |
| 51 | 1.3.1.3.6 | **Performance due to unnecessary nested sub-selects** |  | 6d | 2007-02-20 A | 2007-02-28 A | 50 | 100% |  |  |  |  |  | 48h | 48h |
| 52 | 1.3.1.3.6.1 | Analysis/Development |  | 6d | 2007-02-20 A | 2007-02-28 A |  | 100% |  |  |  |  | Dan | 48h | 48h |
| 53 | 1.3.1.3.7 | Provide the ability to only generate an XSD and castor mapping based on xmi input |  | 2d | 2007-02-28 A | 2007-03-02 A | 51 | 100% |  |  |  |  | Dan | 16h | 16h |
| 54 | 1.3.1.3.8 | Ability to generate interfaces/POJO for domain classes in our UML model |  | 3d | 2007-03-02 A | 2007-03-07 A | 53 | 100% |  |  |  |  | Dan | 24h | 24h |
| 55 | 1.3.1.3.9 | **QA** |  | 25d | 2007-02-20 A | 2007-03-26 A |  | 100% |  |  |  |  |  | 200h | 200h |
| 56 | 1.3.1.3.9.1 | Test Development |  | 7d | 2007-02-20 A | 2007-02-28 A | 30 | 100% |  |  |  | start no earlier than 2007-02-14 | Steve | 56h | 56h |
| 57 | 1.3.1.3.9.2 | Test Execution |  | 9d | 2007-03-14 A | 2007-03-26 A | 39, 56 | 100% |  |  |  |  | Steve | 72h | 72h |
| 58 | 1.3.1.3.9.3 | Test Support |  | 9d | 2007-03-14 A | 2007-03-26 A | 39 | 100% |  |  |  |  | Satish/Dan | 72h | 72h |
| 59 | 1.3.1.3.10 | **Documentation** |  | 4.75d | 2007-03-20 A | 2007-03-27 A |  | 100% |  |  |  |  |  | 32h | 32h |
| 60 | 1.3.1.3.10.1 | Update Programmers Guide, Release Notes |  | 3d | 2007-03-20 A | 2007-03-23 A |  | 100% |  |  |  |  | Dan | 24h | 24h |
| 61 | 1.3.1.3.10.2 | Review |  | 0.5d | 2007-03-26 A | 2007-03-26 A | 60 | 100% |  |  |  |  | Dan | 4h | 4h |
| 62 | 1.3.1.3.10.3 | Final |  | 0.5d | 2007-03-27 A | 2007-03-27 A | 61 | 100% |  |  |  |  | Dan | 4h | 4h |
| 63 | 1.3.1.3.11 | Release Packaging |  | 2d | 2007-03-21 A | 2007-03-28 | 57 | 95% | 0.1d | 86d |  |  | Satish | 16h | 15.2h |
| 64 | 1.3.1.3.12 | **Iteration Plan** |  | 2d | 2007-03-27 | 2007-03-28 | 57 |  |  | 117.5d |  |  |  | 48h |  |
| 65 | 1.3.1.3.12.1 | Review Client Feature Request/Revise Task Plan |  | 2d | 2007-03-27 | 2007-03-28 |  |  |  | 78d | 0d |  | Charles; Avinash; Satish | 48h |  |
| 66 | 1.3.1.4 | 3.2.1 Release Complete | milestone | 0d | 2007-03-28 | 2007-03-28 | 65 |  |  | 83d |  |  |  |  |  |
| 67 | 1.3.2 | **Iteration 2** |  | 63d? | 2007-03-27 A | 2007-06-21 |  | 24% | 48d? | 66.5d |  |  |  | 742h | 136h |
| 68 | 1.3.2.1 | **SDK 4.0 Release (Beta 1)** |  | 63d? | 2007-03-27 A | 2007-06-21 |  | 24% | 48d? | 66.5d |  |  |  | 742h | 136h |
| 69 | 1.3.2.1.1 | Update Requirements Document |  | 5d | 2007-03-29 | 2007-04-04 | 65 |  |  | 78d |  |  | Charles [15%] | 6h |  |
| 70 | 1.3.2.1.2 | **Boot Camp Support** |  | 14d | 2007-04-09 A | 2007-04-26 |  | 75% | 3.5d | 0.5d |  |  |  | 64h | 48h |
| 71 | 1.3.2.1.2.1 | Presentation |  | 4d | 2007-04-09 A | 2007-04-12 A |  | 100% |  |  |  | start no earlier than 2007-04-09 | Satish | 32h | 32h |
| 72 | 1.3.2.1.2.2 | Demo |  | 2d | 2007-04-18 A | 2007-04-19 A |  | 100% |  |  |  | start no earlier than 2007-04-18 | Satish | 16h | 16h |
| 73 | 1.3.2.1.2.3 | Demo |  | 2d | 2007-04-25 | 2007-04-26 |  |  |  | 0.5d | 0d | start no earlier than 2007-04-25 | Satish | 16h |  |
| 74 | 1.3.2.1.3 | **Upgrade Code Generation Framework** |  | 53d? | 2007-03-27 A | 2007-06-07 |  | 35% | 34.26d? | 0.5d | 0d |  |  | 408h | 88h |
| 75 | 1.3.2.1.3.1 | Prototype of new Code Gen Framework |  | 10d | 2007-03-27 A | 2007-04-09 A | 58 | 100% |  |  |  |  | Satish [50%] | 40h | 40h |
| 76 | 1.3.2.1.3.2 | Prototype use of ACEGI/CSM for Security |  | 10d | 2007-03-27 A | 2007-04-09 A | 58 | 100% |  |  |  |  | Satish [50%] | 40h | 40h |

| ID | WBS | Task | Duration | Start | Finish | Predecessors | Complete | Remaining | Total slack | Free slack | Constraint | Resources | Work | Actual work |
| --- | --- | --- | --- | --- | --- | --- | --- | --- | --- | --- | --- | --- | --- | --- |
| 77 | 1.3.2.1.3.3 | **Design** | 8.2d? | 2007-04-13 A | 2007-04-25 |  | 16% | 6.92d? | 2.3d | 1.8d |  |  | 64h | 8h |
| 78 | 1.3.2.1.3.3.1 | Overview | 1d | 2007-04-13 A | 2007-04-13 A | 71 | 100% |  |  |  |  | Satish | 8h | 8h |
| 79 | 1.3.2.1.3.3.2 | Review of Approach | 0.2d | 2007-04-16 | 2007-04-16 | 78 |  |  | 7.3d | 0d |  | Satish; Doug; Kunal; Vijay; Charles | 8h |  |
| 80 | 1.3.2.1.3.3.3 | Code Gen Detail Design | 2d | 2007-04-16 | 2007-04-18 | 79 |  |  | 7.3d |  |  | Satish | 16h |  |
| 81 | 1.3.2.1.3.3.4 | ACEGI/CSM Security Detail Design | 2d | 2007-04-20 | 2007-04-23 | 72 |  |  | 2.3d | 0d |  | Satish | 16h |  |
| 82 | 1.3.2.1.3.3.5 | Design/Prototype Review | 0.2d? | 2007-04-24 | 2007-04-24 | 81 |  |  | 2.3d | 0d |  | Satish; Doug; Kunal; Vijay; Charles | 8h |  |
| 83 | 1.3.2.1.3.3.6 | Design Update | 1d | 2007-04-24 | 2007-04-25 | 82 |  |  | 2.3d |  |  | Satish | 8h |  |
| 84 | 1.3.2.1.3.4 | Implement new code generation framework | 3d | 2007-04-27 | 2007-05-01 | 77, 73 |  |  | 0.5d | 0d |  | Satish | 24h |  |
| 85 | 1.3.2.1.3.5 | Rewrite bean generation for JDK 1.5 | 2d | 2007-05-02 | 2007-05-03 | 84 |  |  | 0.5d | 0d |  | Satish | 16h |  |
| 86 | 1.3.2.1.3.6 | Rewrite O/R mapping generation (.hbm.xml, .cfg.xml, ehcache.xml) | 10d | 2007-05-04 | 2007-05-31 | 85 |  |  | 0.5d | 0d |  | Satish | 80h |  |
| 87 | 1.3.2.1.3.7 | **Implement class cache for JDK 1.5** | 7d | 2007-05-11 | 2007-05-22 | 116, 120 |  |  | 0d |  |  |  | 56h |  |
| 88 | 1.3.2.1.3.7.1 | Development | 4d | 2007-05-11 | 2007-05-17 |  |  |  | 0d |  |  | Dan | 32h |  |
| 89 | 1.3.2.1.3.7.2 | Integration of class cache in web tier | 1d | 2007-05-17 | 2007-05-18 | 88 |  |  | 0d |  |  | Dan | 8h |  |
| 90 | 1.3.2.1.3.7.3 | Change nestedCriteria to use class cache | 1d | 2007-05-18 | 2007-05-21 | 89 |  |  | 0d |  |  | Dan | 8h |  |
| 91 | 1.3.2.1.3.7.4 | Change CQL translator to use class cache | 1d | 2007-05-21 | 2007-05-22 | 90 |  |  | 0d |  |  | Dan | 8h |  |
| 92 | 1.3.2.1.3.8 | Rewrite XML schema generaotor | 2d | 2007-05-22 | 2007-05-24 | 87 |  |  | 0d |  |  | Dan | 16h |  |
| 93 | 1.3.2.1.3.9 | Rewrite XML mapping file generator | 2d | 2007-05-24 | 2007-05-28 | 92 |  |  | 0d |  |  | Dan | 16h |  |
| 94 | 1.3.2.1.3.10 | Build Script | 2d | 2007-05-28 | 2007-05-30 | 93 |  |  | 0d |  |  | Dan | 16h |  |
| 95 | 1.3.2.1.3.11 | Supporting files generation (coreBeans.properties, DAOConfig.xml) | 5d | 2007-06-01 | 2007-06-07 | 86 |  |  | 0.5d |  |  | Satish | 40h |  |
| 96 | 1.3.2.1.4 | **QA** | 39d | 2007-04-30 | 2007-06-21 |  |  |  | 29.5d |  |  |  | 240h |  |
| 97 | 1.3.2.1.4.1 | Test Development | 10d | 2007-04-30 | 2007-05-11 | 77 |  |  | 95.5d |  | start no earlier than 2007-04-30 | Steve | 80h |  |
| 98 | 1.3.2.1.4.2 | Test Execution | 10d | 2007-06-08 | 2007-06-21 | 74 |  |  | 66.5d |  |  | Steve | 80h |  |
| 99 | 1.3.2.1.4.3 | Test Support | 10d | 2007-06-08 | 2007-06-21 | 74 |  |  | 0.5d | 0d |  | Satish [50%] | 40h |  |
| 100 | 1.3.2.1.4.4 | Documentation | 10d | 2007-06-08 | 2007-06-21 | 74 |  |  | 0.5d | 0d |  | Satish [50%] | 40h |  |

Notes:
- 84: ·Combine generation steps so that XMI file is read only once / ·Implement model validation routine as common project
- 85: ·Support for java 1.5 generics / ·Allow to use visibility specified in UML tool / ·Allow to use primitives
- 86: ·Support for alternate way of mapping inheritance / ·Many to One and One to Many do not support correlation table / ·Lazy attribute in UML model / ·Cascade operations in UML model
- 92: ·Use pulicId and version in the xml schema / ·use permissible values in XML schema

| ID | WBS | Task | Type | Duration | Start | Finish | Predecessors | Complete | Remaining | Total slack | Free slack | Constraint | Resources | Work | Actual work |
| --- | --- | --- | --- | --- | --- | --- | --- | --- | --- | --- | --- | --- | --- | --- | --- |
| 101 | 1.3.2.1.5 | **Iteration Plan** |  | 1d | 2007-05-22 | 2007-05-23 |  |  |  | 88d |  |  |  | 24h |  |
| 102 | 1.3.2.1.5.1 | Review Client Feature Request/Revise Task Plan |  | 1d | 2007-05-22 | 2007-05-23 | 91 |  |  | 88d |  |  | Charles; Avinash; Satish | 24h |  |
| 103 | 1.3.3 | **Iteration 3** |  | 47.25d | 2007-03-07 A | 2007-05-11 |  | 29% | 33.78d | 96d |  |  |  | 550h | 143.2h |
| 104 | 1.3.3.1 | **Release 4.0 (Open Source UML Tool Support)** |  | 47.25d | 2007-03-07 A | 2007-05-11 |  | 29% | 33.78d | 96d |  |  |  | 550h | 143.2h |
| 105 | 1.3.3.1.1 | Update Requirements Document |  | 5d | 2007-04-05 | 2007-04-11 | 69 |  |  | 117.5d |  |  | Charles [15%] | 6h |  |
| 106 | 1.3.3.1.2 | **Open Source Modeling Tool XMI Processor** |  | 37.25d | 2007-03-07 A | 2007-04-27 |  | 68% | 11.84d | 106d |  |  |  | 288h | 143.2h |
| 107 | 1.3.3.1.2.1 | Evaluation |  | 4d | 2007-03-07 A | 2007-04-02 A | 62 | 100% |  |  |  |  | Dan | 32h | 32h |
| 108 | 1.3.3.1.2.2 | Present Evaluation for review |  | 0.5d | 2007-04-02 A | 2007-04-02 A | 107 | 100% |  |  |  |  | Dan | 4h | 4h |
| 109 | 1.3.3.1.2.3 | Build SDK Test Model |  | 3d | 2007-04-02 A | 2007-04-05 A | 108 | 100% |  |  |  |  |  |  |  |
| 110 | 1.3.3.1.2.4 | Revise Evaluation/Finalize On Tool |  | 3d | 2007-04-05 A | 2007-04-09 A | 109 | 100% |  |  |  |  | Dan | 24h | 24h |
| 111 | 1.3.3.1.2.5 | Design |  | 2d | 2007-04-10 A | 2007-04-11 A | 110 | 100% |  |  |  |  | Dan | 16h | 16h |
| 112 | 1.3.3.1.2.6 | Design Review |  | 1d | 2007-04-12 A | 2007-04-12 | 111 | 60% | 0.4d | 6d | 0d | start no earlier than 2007-04-09 | Dan; Satish; Christophe; Ye | 32h | 19.2h |
| 113 | 1.3.3.1.2.7 | Finalize Design |  | 0.5d | 2007-04-13 | 2007-04-13 | 112 |  |  | 6d | 0d |  | Dan | 4h |  |
| 114 | 1.3.3.1.2.8 | Evaluate LOE/Revise Task Plan for Development |  | 4d | 2007-04-13 | 2007-04-19 | 113 |  |  | 112d |  |  | Charles; Steve A.; Ye Wu | 96h |  |
| 115 | 1.3.3.1.2.9 | Development |  | 10d | 2007-04-13 A | 2007-04-27 | 113 | 60% | 4d | 0d |  |  | Dan | 80h | 48h |
| 116 | 1.3.3.1.3 | **QA** |  | 20d | 2007-04-13 | 2007-05-11 |  |  |  | 0d |  |  |  | 152h |  |
| 117 | 1.3.3.1.3.1 | Test Development |  | 5d | 2007-04-13 | 2007-04-20 | 113 |  |  | 15d |  |  | Steve | 40h |  |
| 118 | 1.3.3.1.3.2 | Test Execution |  | 10d | 2007-04-27 | 2007-05-11 | 115 |  |  | 0d |  |  | Steve | 80h |  |
| 119 | 1.3.3.1.3.3 | Test Support |  | 8d | 2007-04-27 | 2007-05-09 | 115 |  |  | 2d |  |  | Dan [50%] | 32h |  |
| 120 | 1.3.3.1.4 | Release Packaging |  | 8d | 2007-04-27 | 2007-05-09 | 115 |  |  | 2d |  |  | Dan [50%] | 32h |  |
| 121 | 1.3.3.1.5 | **Iteration Plan** |  | 3d | 2007-04-27 | 2007-05-02 |  |  |  | 103d | 7d |  |  | 72h |  |
| 122 | 1.3.3.1.5.1 | Review Client Feature Request/Revise Task Plan |  | 3d | 2007-04-27 | 2007-05-02 | 115 |  |  | 103d |  |  | Charles; Avinash; Satish | 72h |  |
| 123 | 1.3.3.1.6 | Iteration 3 Complete | milestone | 0d | 2007-05-11 | 2007-05-11 | 116, 121 |  |  | 96d |  |  |  |  |  |
| 124 | 1.3.4 | **Iteration 4** |  | 35d | 2007-05-30 | 2007-07-19 |  |  |  | 0d |  |  |  | 556h |  |
| 125 | 1.3.4.1 | **Release 4.0 (Beta 2)** |  | 35d | 2007-05-30 | 2007-07-19 |  |  |  | 0d |  |  |  | 532h |  |
| 126 | 1.3.4.1.1 | **Change architecture of Application Service** |  | 7d | 2007-05-30 | 2007-06-08 |  |  |  | 0d |  |  |  | 60h |  |
| 127 | 1.3.4.1.1.1 | Design |  | 1.5d | 2007-05-30 | 2007-05-31 | 94 |  |  | 0d |  |  | Dan | 12h |  |
| 128 | 1.3.4.1.1.2 | Design Review |  | 0.25d | 2007-06-01 | 2007-06-01 | 127 |  |  | 0d |  |  | Dan; Doug M.; Satish | 6h |  |
| 129 | 1.3.4.1.1.3 | Design Update |  | 0.25d | 2007-06-01 | 2007-06-01 | 128 |  |  | 0d |  |  | Dan | 2h |  |
| 130 | 1.3.4.1.1.4 | Development |  | 5d | 2007-06-01 | 2007-06-08 | 129 |  |  | 0d |  |  | Dan | 40h |  |

| ID | WBS | Task | Type | Duration | Start | Finish | Predecessors | Total slack | Free slack | Constraint | Resources | Work |
| --- | --- | --- | --- | --- | --- | --- | --- | --- | --- | --- | --- | --- |
| 131 | 1.3.4.1.2 | **Re-architect information in SpringConfig.xml and DAOConfig.xml** |  | 4.5d | 2007-06-08 | 2007-06-14 |  | 0d |  |  |  | 40h |
| 132 | 1.3.4.1.2.1 | Design |  | 1d | 2007-06-08 | 2007-06-11 | 126 | 0d |  |  | Dan | 8h |
| 133 | 1.3.4.1.2.2 | Design Review |  | 0.25d | 2007-06-11 | 2007-06-11 | 132 | 0d |  |  | Dan; Satish; Charles | 6h |
| 134 | 1.3.4.1.2.3 | Design Update |  | 0.25d | 2007-06-11 | 2007-06-11 | 133 | 0d |  |  | Dan | 2h |
| 135 | 1.3.4.1.2.4 | Development |  | 3d | 2007-06-12 | 2007-06-14 | 134 | 0d |  |  | Dan | 24h |
| 136 | 1.3.4.1.3 | **Remove duplication of code due to security injection - ACEGI Framework** |  | 8d | 2007-06-22 | 2007-07-03 |  | 0.5d | 0d |  |  | 64h |
| 137 | 1.3.4.1.3.1 | Development/Unit Test |  | 8d | 2007-06-22 | 2007-07-03 | 99, 100 | 0.5d |  |  | Satish | 64h |
| 138 | 1.3.4.1.4 | **Improved logging/trace messages** |  | 2.5d | 2007-07-05 | 2007-07-09 |  | 56d |  |  |  | 20h |
| 139 | 1.3.4.1.4.1 | Development |  | 2.5d | 2007-07-05 | 2007-07-09 | 136 | 56d |  |  | Dan | 20h |
| 140 | 1.3.4.1.5 | **Annotation Based Web Services** |  | 13.5d | 2007-06-15 | 2007-07-05 |  | 0d |  |  |  | 108h |
| 141 | 1.3.4.1.5.1 | Design |  | 3d | 2007-06-15 | 2007-06-19 | 131 | 0d |  |  | Dan | 24h |
| 142 | 1.3.4.1.5.2 | Design Review |  | 0.25d | 2007-06-20 | 2007-06-20 | 141 | 0d |  |  | Dan | 2h |
| 143 | 1.3.4.1.5.3 | Design Update |  | 0.25d | 2007-06-20 | 2007-06-20 | 142 | 0d |  |  | Dan | 2h |
| 144 | 1.3.4.1.5.4 | Development/Unit Test |  | 10d | 2007-06-20 | 2007-07-05 | 143 | 0d |  |  | Dan | 80h |
| 145 | 1.3.4.1.6 | Release to QA |  | 1d | 2007-07-05 | 2007-07-06 | 136, 140 | 57d |  |  | Dan | 8h |
| 146 | 1.3.4.1.7 | **QA** |  | 20.5d | 2007-06-20 | 2007-07-19 |  | 10.5d | 0d |  |  | 176h |
| 147 | 1.3.4.1.7.1 | Test Development |  | 5d | 2007-06-20 | 2007-06-26 | 141 | 62.5d | 6d |  | Steve | 40h |
| 148 | 1.3.4.1.7.2 | Test Execution |  | 10d | 2007-07-05 | 2007-07-19 | 136, 140 | 48d |  |  | Steve | 80h |
| 149 | 1.3.4.1.7.3 | Test Support |  | 7d | 2007-07-05 | 2007-07-16 | 136, 140 | 0d |  |  | Dan [50%]; Satish [50%] | 56h |
| 150 | 1.3.4.1.8 | **Documentation** |  | 7d | 2007-07-05 | 2007-07-16 |  | 0d |  |  |  | 56h |
| 151 | 1.3.4.1.8.1 | Update Documentation |  | 7d | 2007-07-05 | 2007-07-16 | 136, 140 | 0d |  |  | Dan [50%]; Satish [50%] | 56h |
| 152 | 1.3.4.2 | Review Client Feature Request/Revise Task Plan |  | 1d | 2007-07-06 | 2007-07-06 | 147 | 56.5d |  | start no earlier than 2007-07-06 | Charles; Avinash; Satish | 24h |
| 153 | 1.3.4.3 | Release 4.0 Beta 2 Complete | milestone | 0d | 2007-07-19 | 2007-07-19 | 146, 150 | 48d |  | start no earlier than 2007-05-01 |  |  |
| 154 | 1.3.5 | **Iteration 5** |  | 46d | 2007-07-16 | 2007-09-18 |  | 0d |  |  |  | 620h |
| 155 | 1.3.5.1 | **Release 4.0 (Final Release)** |  | 46d | 2007-07-16 | 2007-09-18 |  | 0d |  |  |  | 620h |
| 156 | 1.3.5.1.1 | **Support multiple ApplicationService in same JVM** |  | 10d | 2007-07-16 | 2007-07-30 |  | 3.5d | 0d |  |  | 92h |
| 157 | 1.3.5.1.1.1 | Design |  | 3d | 2007-07-16 | 2007-07-19 | 149, 151 | 3.5d | 0d | start no earlier than 2007-02-12 | Satish | 24h |
| 158 | 1.3.5.1.1.2 | Design Review |  | 0.5d | 2007-07-19 | 2007-07-19 | 157 | 3.5d | 0d |  | Satish; Kunal; Doug; Avinash | 16h |
| 159 | 1.3.5.1.1.3 | Design Update |  | 0.5d | 2007-07-20 | 2007-07-20 | 158 | 3.5d | 0d |  | Satish | 4h |
| 160 | 1.3.5.1.1.4 | Development/Unit Test |  | 6d | 2007-07-20 | 2007-07-30 | 159 | 3.5d |  |  | Satish | 48h |

| ID | WBS | Task | Duration | Start | Finish | Predecessors | Total slack | Free slack | Constraint | Resources | Work |
| --- | --- | --- | --- | --- | --- | --- | --- | --- | --- | --- | --- |
| 161 | 1.3.5.1.2 | **Support interfaces (including marker interfaces), abstract class, enumeration** | 14.5d | 2007-07-16 | 2007-08-03 |  | 0d |  |  |  | 116h |
| 162 | 1.3.5.1.2.1 | Design | 1.5d | 2007-07-16 | 2007-07-17 | 149, 151 | 0d |  |  | Dan | 12h |
| 163 | 1.3.5.1.2.2 | Design Review | 0.5d | 2007-07-18 | 2007-07-18 | 162 | 0d |  |  | Dan | 4h |
| 164 | 1.3.5.1.2.3 | Design Update | 0.5d | 2007-07-18 | 2007-07-18 | 163 | 0d |  |  | Dan | 4h |
| 165 | 1.3.5.1.2.4 | Development/Unit Test | 12d | 2007-07-19 | 2007-08-03 | 164 | 0d |  |  | Dan | 96h |
| 166 | 1.3.5.1.3 | **Allow user to Specify name of the remoteService.xml file externally** | 2d | 2007-08-06 | 2007-08-07 |  | 0d |  |  |  | 16h |
| 167 | 1.3.5.1.3.1 | Development/Unit Test | 2d | 2007-08-06 | 2007-08-07 | 161 | 0d |  |  | Dan | 16h |
| 168 | 1.3.5.1.4 | **Allow to use composition/class as attributes** | 6.5d | 2007-07-30 | 2007-08-07 |  | 3.5d | 0d |  |  | 56h |
| 169 | 1.3.5.1.4.1 | Design | 1d | 2007-07-30 | 2007-07-31 | 156 | 3.5d | 0d |  | Satish | 8h |
| 170 | 1.3.5.1.4.2 | Design Review | 0.25d | 2007-07-31 | 2007-07-31 | 169 | 3.5d | 0d |  | Dan; Satish; Charles | 6h |
| 171 | 1.3.5.1.4.3 | Design Update | 0.25d | 2007-07-31 | 2007-07-31 | 170 | 3.5d | 0d |  | Satish | 2h |
| 172 | 1.3.5.1.4.4 | Development/Unit Test | 5d | 2007-08-01 | 2007-08-07 | 171 | 3.5d |  |  | Satish | 40h |
| 173 | 1.3.5.1.5 | **Transient Variable Support** | 7.5d | 2007-08-08 | 2007-08-17 |  | 0d |  |  |  | 60h |
| 174 | 1.3.5.1.5.1 | Design | 1d | 2007-08-08 | 2007-08-08 | 166 | 0d |  |  | Dan | 8h |
| 175 | 1.3.5.1.5.2 | Design Review | 0.25d | 2007-08-09 | 2007-08-09 | 174 | 0d |  |  | Dan | 2h |
| 176 | 1.3.5.1.5.3 | Design Update | 0.25d | 2007-08-09 | 2007-08-09 | 175 | 0d |  |  | Dan | 2h |
| 177 | 1.3.5.1.5.4 | Development/Unit Test | 6d | 2007-08-09 | 2007-08-17 | 176 | 0d |  |  | Dan | 48h |
| 178 | 1.3.5.1.6 | **QA** | 14.5d | 2007-08-06 | 2007-08-24 |  | 0d |  |  |  | 104h |
| 179 | 1.3.5.1.6.1 | Test Development | 3d | 2007-08-06 | 2007-08-08 | 156, 161 | 11.5d |  | start no earlier than 2007-08-06 | Steve | 24h |
| 180 | 1.3.5.1.6.2 | Test Execution | 5d | 2007-08-17 | 2007-08-24 | 173 | 0d |  |  | Steve | 40h |
| 181 | 1.3.5.1.6.3 | Test Support (Setup/Configuration) | 2d | 2007-08-08 | 2007-08-09 | 168 | 10.5d |  |  | Satish | 16h |
| 182 | 1.3.5.1.6.4 | Test Support | 5d | 2007-08-17 | 2007-08-24 | 173 | 0d |  |  | Dan [50%]; Satish [50%] | 24h |
| 183 | 1.3.5.1.7 | **Integration Testing** | 7d | 2007-08-24 | 2007-09-04 |  | 0d |  |  |  | 96h |
| 184 | 1.3.5.1.7.1 | Promote to Staging | 2d | 2007-08-24 | 2007-08-28 | 178 | 0d |  |  | Dan | 16h |
| 185 | 1.3.5.1.7.2 | Test | 5d | 2007-08-28 | 2007-09-04 | 184 | 0d |  |  | Steve; QA | 80h |
| 186 | 1.3.5.1.8 | UAT Test | 10d | 2007-09-04 | 2007-09-18 | 183 | 0d |  |  | SDK Users | 80h |

| ID | WBS | Task | Type | Duration | Start | Finish | Predecessors | Total slack | Free slack | Constraint | Resources | Work |
| --- | --- | --- | --- | --- | --- | --- | --- | --- | --- | --- | --- | --- |
| 187 | 1.4 | **Transition** |  | 27d | 2007-08-17 | 2007-09-25 |  | 0d |  |  |  | 244h |
| 188 | 1.4.1 | **Documentation** |  | 15.5d | 2007-08-17 | 2007-09-07 |  | 9.5d |  |  |  | 172h |
| 189 | 1.4.1.1 | New users guide |  | 10d | 2007-08-21 | 2007-09-03 | 173 | 9.5d | 0d | start no earlier than 2007-06-15 | Satish [50%] | 40h |
| 190 | 1.4.1.2 | New technical guide |  | 10d | 2007-08-24 | 2007-09-07 | 192 | 10d | 0d | start no earlier than 2007-06-15 | Dan | 80h |
| 191 | 1.4.1.3 | technical guide help |  | 4d | 2007-09-04 | 2007-09-07 | 189 | 9.5d | 0d |  | Satish | 32h |
| 192 | 1.4.1.4 | How to examples |  | 5d | 2007-08-17 | 2007-08-24 | 173 | 10d | 0d | start no earlier than 2007-06-15 | Dan [50%] | 20h |
| 193 | 1.4.2 | **Production Packaging** |  | 12d | 2007-09-07 | 2007-09-25 |  | 0d |  |  |  | 72h |
| 194 | 1.4.2.1 | Update Download Site |  | 2d | 2007-09-07 | 2007-09-11 | 190 | 10d |  |  | Dan | 16h |
| 195 | 1.4.2.2 | Develop Production promotion Documentation |  | 2d | 2007-09-10 | 2007-09-11 | 191 | 9.5d |  |  | Satish | 16h |
| 196 | 1.4.2.3 | Push to Produciton |  | 5d | 2007-09-18 | 2007-09-25 | 186 | 0d |  |  | Terpsys | 40h |
| 197 | 1.4.3 | 4.0 Release Complete | milestone | 0d | 2007-09-25 | 2007-09-25 | 196 | 0d |  |  |  |  |
